# TopCoder Software Project Plan

Schedule from MS Project, 2005-06-29 to 2006-09-07, A marks actual dates.
TopCoder Software Project Plan
TopCoder

## Calendars

- Standard: Mon-Fri 08:00-12:00, 13:00-17:00; Sat-Sun off.

## Resources

| Resource |
| --- |
| Project Manager |
| Component Architect |
| Information Architect |
| Component Manager |
| Application Architect |
| Application Assembler 1 |
| Deployment Engineer 1 |
| Customer |
| Member |
| Review |
| Application Assembler 4 |
| Application Assembler 3 |
| Application Assembler 2 |
| Deployment Engineer 3 |
| Deployment Engineer 2 |
| Deployment Engineer |
| Deployment Engineer/Project Manager |
| Javier |
| Greg Paul |
| Dave Messinger |
| Lorie Norman |
| Tony Jefts |
| test case participants |
| All Teams |
| All Captains |
| Reviewer3 |
| Reviewer2 |
| Reviewer1 |
| Assembly Manager |
| Architect |
| DE |
| Review Team |
| Kim Ruhl |
| Petar Canic |
| WishingBone |
| Brian Chang |
| Dean Brodrick |

## Schedule

| ID | WBS | Task | Type | Duration | Start | Finish | Predecessors | Complete | Remaining | Baseline start | Baseline finish | Baseline duration | Total slack | Constraint | Resources | Work | Actual work |
| --- | --- | --- | --- | --- | --- | --- | --- | --- | --- | --- | --- | --- | --- | --- | --- | --- | --- |
| 1 | 1 | **TopCoder Online Review/Scorecard Project** |  | 312d? | 2005-06-29 A | 2006-09-07 |  | 36% | 198.21d? |  |  |  | 0d |  |  | 1576h | 627.2h |
| 2 | 1.1 | Kick Off Meeting |  | 0.33d? | 2006-03-02 | 2006-03-02 |  |  |  |  |  |  | 135.67d | start no earlier than 2006-03-02 | Dave Messinger; Lorie Norman; Tony Jefts | 8h |  |
| 3 | 1.2 | Creation of TopCoder Application Forum |  | 1d | 2006-03-02 A | 2006-03-03 A | 2 | 100% |  |  |  |  |  | start no earlier than 2005-06-29 | Lorie Norman | 8h | 8h |
| 4 | 1.3 | Assign Client Permissions to Forums |  | 1d | 2006-03-02 A | 2006-03-02 A |  | 100% |  |  |  |  |  | start no earlier than 2005-06-29 | Lorie Norman | 8h | 8h |
| 5 | 1.4 | Create SVN module for Application |  | 1d | 2005-06-29 A | 2005-06-29 A |  | 100% |  |  |  |  |  | start no earlier than 2005-06-29 | Lorie Norman | 8h | 8h |
| 6 | 1.5 | Key Stakeholder Meetings |  | 1.5d | 2006-03-06 A | 2006-03-07 A |  | 100% |  |  |  |  |  | start no earlier than 2006-03-06 | Greg Paul; Javier; Dave Messinger; Lorie Norman | 48h | 48h |
| 7 | 1.6 | **Application Specification** |  | 33.5d? | 2006-03-02 A | 2006-04-18 A |  | 100% |  | 2004-01-20 | 2004-02-11 | 17d? |  |  |  | 280h | 280h |
| 8 | 1.6.1 | **Requirement Specification Draft** |  | 1d | 2006-03-03 A | 2006-03-03 A |  | 100% |  | 2004-01-20 | 2004-01-22 | 3d? |  |  | Lorie Norman | 8h | 8h |
| 9 | 1.6.1.1 | Fill in Scope |  | 1d | 2006-03-03 A | 2006-03-03 A |  | 100% |  |  |  |  |  | start no earlier than 2006-03-03 |  |  |  |
| 10 | 1.6.2 | Review Meeting |  | 0.5d | 2006-03-06 A | 2006-03-06 A | 8 | 100% |  | 2004-01-23 | 2004-01-23 | 1d? |  |  | Project Manager; Customer | 8h | 8h |
| 11 | 1.6.3 | Create/Update Use Cases |  | 2d | 2006-03-02 A | 2006-03-03 A |  | 100% |  |  |  |  |  | start no earlier than 2006-03-02 |  |  |  |
| 12 | 1.6.4 | **Module Specification** |  | 18.5d | 2006-03-09 A | 2006-04-04 A |  | 100% |  | 2004-01-23 | 2004-02-11 | 14d? |  |  |  | 80h | 80h |
| 13 | 1.6.4.1 | Create/Update Activity Diagram |  | 10d | 2006-03-15 A | 2006-03-28 A | 10 | 100% |  |  |  |  |  | finish no earlier than 2006-03-28 | Project Manager | 80h | 80h |
| 14 | 1.6.4.2 | Fill in Logic Requirements for use cases and activity diagrams |  | 5d | 2006-03-09 A | 2006-04-03 A | 13 | 100% |  |  |  |  |  |  |  |  |  |
| 15 | 1.6.4.3 | Review Meeting |  | 1d | 2006-04-04 A | 2006-04-04 A | 14 | 100% |  |  |  |  |  | start no earlier than 2006-03-10 |  |  |  |
| 16 | 1.6.5 | Create Site Map |  | 1d? | 2006-04-04 A | 2006-04-04 A |  | 100% |  |  |  |  |  | start no earlier than 2006-04-04 |  |  |  |
| 17 | 1.6.6 | Review Meeting |  | 0.5d | 2006-04-03 A | 2006-04-03 A |  | 100% |  |  |  |  |  | start no earlier than 2006-04-03 |  |  |  |
| 18 | 1.6.7 | Prototype Revision 1 |  | 14d | 2006-03-20 A | 2006-04-06 A |  | 100% |  |  |  |  |  | finish no earlier than 2006-04-06 | Kim Ruhl | 112h | 112h |
| 19 | 1.6.8 | Architecture Diagram Draft |  | 1d | 2006-03-22 A | 2006-03-23 A | 17 | 100% |  | 2004-01-27 | 2004-01-28 | 2d? |  | start no earlier than 2005-01-19 | Project Manager | 8h | 8h |
| 20 | 1.6.9 | Fill in Technical Requirements |  | 0.5d | 2006-04-04 A | 2006-04-04 A | 19 | 100% |  |  |  |  |  | start no earlier than 2006-04-04 |  |  |  |
| 21 | 1.6.10 | Review Meeting |  | 2d | 2006-04-07 A | 2006-04-10 A | 18 | 100% |  | 2004-01-30 | 2004-01-30 | 1d? |  | start no earlier than 2006-04-07 | Project Manager; Customer | 32h | 32h |
| 22 | 1.6.11 | Prototype Revision 2 Review |  | 2d | 2006-04-11 A | 2006-04-12 A | 21 | 100% |  |  |  |  |  | start no earlier than 2006-04-11 |  |  |  |
| 23 | 1.6.12 | Complete QA Plan |  | 1d | 2006-04-05 A | 2006-04-05 A | 12 | 100% |  |  |  |  |  |  |  |  |  |
| 24 | 1.6.13 | Review Meeting |  | 0.5d | 2006-04-13 A | 2006-04-13 A | 22 | 100% |  | 2004-02-06 | 2004-02-06 | 1d? |  |  | Project Manager; Customer | 8h | 8h |
| 25 | 1.6.14 | Update Final Specification Deliverables |  | 2d | 2006-04-13 A | 2006-04-17 A | 24 | 100% |  | 2004-02-09 | 2004-02-10 | 2d? |  | start no earlier than 2006-04-06 | Project Manager | 16h | 16h |
| 26 | 1.6.15 | Final Specification Presentation | milestone | 1d? | 2006-04-17 A | 2006-04-18 A | 25 | 100% |  | 2004-02-11 | 2004-02-11 | 1d? |  |  | Project Manager | 8h | 8h |

Notes:
- 12: This will be iterated over multiple times for each module.

| ID | WBS | Task | Type | Duration | Start | Finish | Predecessors | Complete | Remaining | Total slack | Free slack | Constraint | Resources | Work | Actual work |
| --- | --- | --- | --- | --- | --- | --- | --- | --- | --- | --- | --- | --- | --- | --- | --- |
| 27 | 1.7 | **Application Architecture** |  | 26.5d | 2006-04-18 A | 2006-05-24 |  | 63% | 9.74d | 0d |  |  |  | 424h | 275.2h |
| 28 | 1.7.1 | Test Scenarios |  | 10d | 2006-05-08 A | 2006-05-19 A | 23 | 100% |  |  |  | start no earlier than 2006-05-08 | Dean Brodrick | 80h | 80h |
| 29 | 1.7.2 | Update Site Map |  | 5d | 2006-04-18 A | 2006-04-25 A | 7 | 100% |  |  |  |  | Kim Ruhl; Petar Canic | 80h | 80h |
| 30 | 1.6.3 | Physical Data Model Definition |  | 5d | 2006-04-18 A | 2006-04-25 | 7 | 95% | 0.25d | 21.5d |  | finish no earlier than 2005-02-04 | WishingBone | 40h | 38h |
| 31 | 1.7.4 | **UML Diagrams** |  | 15d | 2006-04-20 A | 2006-05-10 | 7 | 64% | 5.35d | 0d |  |  |  | 120h | 77.2h |
| 32 | 1.6.2 | Component Sequence Diagrams |  | 7d | 2006-04-20 A | 2006-04-28 | 7 | 95% | 0.35d | 3d | 0d | start no earlier than 2006-04-20 | WishingBone | 56h | 53.2h |
| 33 | 1.6.1 | Component Interface Diagram |  | 6d | 2006-05-01 A | 2006-05-08 | 32 | 50% | 3d | 0d |  | finish no earlier than 2005-02-04 | WishingBone | 48h | 24h |
| 34 | 1.7.4.3 | Component Diagram |  | 2d | 2006-05-09 | 2006-05-10 | 33 |  |  | 0d |  |  | WishingBone | 16h |  |
| 35 | 1.7.5 | PM Review |  | 1d | 2006-05-11 | 2006-05-11 | 31 |  |  | 8.5d | 0d |  | Project Manager; Component Architect | 16h |  |
| 36 | 1.6.4 | Application Architecture Presentation |  | 0.5d | 2006-05-12 | 2006-05-12 | 35 |  |  | 8.5d |  |  | Project Manager; Component Architect | 8h |  |
| 37 | 1.6.5 | Component Specifications | milestone | 5d | 2006-05-11 | 2006-05-17 | 31 |  |  | 0d |  | finish no earlier than 2005-02-11 | Component Architect | 40h |  |
| 38 | 1.7.8 | Application Design Specification |  | 5d | 2006-05-18 | 2006-05-24 | 37 |  |  | 0d |  |  | Component Architect | 40h |  |
| 39 | 1.8 | **Component Production** |  | 26d | 2006-05-25 | 2006-06-29 |  |  |  | 0d |  |  |  | 208h |  |
| 40 | 1.8.1 | Design Posting |  | 6d | 2006-05-25 | 2006-06-01 | 27 |  |  | 0d |  | start no earlier than 2005-03-09 | Member | 48h |  |
| 41 | 1.8.2 | Design Review |  | 4d | 2006-06-02 | 2006-06-07 | 40 |  |  | 0d |  | finish no earlier than 2005-03-21 | Member | 32h |  |
| 42 | 1.8.3 | Design Final Fixes |  | 2d | 2006-06-08 | 2006-06-09 | 41 |  |  | 0d |  |  | Member | 16h |  |
| 43 | 1.8.4 | Creation of Dev Distro |  | 1d | 2006-06-12 | 2006-06-12 | 42 |  |  | 0d |  |  | Component Manager | 8h |  |
| 44 | 1.8.5 | Development Posting |  | 6d | 2006-06-13 | 2006-06-20 | 43 |  |  | 0d |  | start no earlier than 2005-03-30 | Member | 48h |  |
| 45 | 1.8.6 | Development Review |  | 4d | 2006-06-21 | 2006-06-26 | 44 |  |  | 0d |  |  | Member | 32h |  |
| 46 | 1.8.7 | Development Final Fixes | milestone | 2d | 2006-06-27 | 2006-06-28 | 45 |  |  | 0d |  | finish no earlier than 2005-04-06 | Member | 16h |  |
| 47 | 1.8.8 | Post to Catalog |  | 1d | 2006-06-29 | 2006-06-29 | 46 |  |  | 0d |  |  | Component Manager | 8h |  |
| 48 | 1.9 | **Assembly Competitions** |  | 35d | 2006-06-09 | 2006-07-27 |  |  |  | 0d |  |  |  | 192h |  |
| 49 | 1.9.1 | **Setup** |  | 16d | 2006-06-09 | 2006-06-30 |  |  |  | 10d |  |  |  |  |  |
| 50 | 1.9.1.1 | Divide Use Cases for Competitions |  | 1d | 2006-06-09 | 2006-06-09 | 39FS-15d |  |  | 34d |  | start no earlier than 2006-03-29 |  |  |  |
| 51 | 1.9.1.2 | TopCoder Website Content Creation |  | 5d | 2006-06-23 | 2006-06-29 | 39FS-5d |  |  | 20d |  |  |  |  |  |
| 52 | 1.9.1.3 | TopCoder Website Informaiton Posted |  | 1d | 2006-06-16 | 2006-06-16 | 39FS-10d |  |  | 5d | 0d | start no earlier than 2006-05-17 |  |  |  |
| 53 | 1.9.1.4 | Package Components |  | 1d | 2006-06-30 | 2006-06-30 | 47 |  |  | 0d |  |  |  |  |  |

| ID | WBS | Task | Duration | Start | Finish | Predecessors | Total slack | Free slack | Constraint | Resources | Work | Text1 |
| --- | --- | --- | --- | --- | --- | --- | --- | --- | --- | --- | --- | --- |
| 54 | 1.9.2 | **Test Case Development** | 5d | 2006-06-19 | 2006-06-23 |  | 5d |  |  |  | 32h |  |
| 55 | 1.9.2.1 | Submit tests | 4d | 2006-06-19 | 2006-06-22 | 52 | 5d | 0d | start no earlier than 2006-03-22 | test case participants | 32h |  |
| 56 | 1.9.2.2 | Screen test cases | 1d | 2006-06-23 | 2006-06-23 | 55 | 5d |  |  |  |  |  |
| 57 | 1.9.3 | Team Formation | 10d | 2006-06-19 | 2006-06-30 | 52 | 19d |  |  |  |  |  |
| 58 | 1.9.4 | **Development** | 19d | 2006-07-03 | 2006-07-27 |  | 0d |  |  |  | 160h |  |
| 59 | 1.9.4.1 | **Opening Round** | 19d | 2006-07-03 | 2006-07-27 |  | 0d |  |  |  | 160h |  |
| 60 | 1.9.4.1.1 | **Team Development** | 6d | 2006-07-03 | 2006-07-10 |  | 0d |  |  |  | 48h |  |
| 61 | 1.9.4.1.1.1 | **Development of Use Cases** | 6d | 2006-07-03 | 2006-07-10 |  | 0d |  |  | All Teams | 48h | prototype conversion, sequence diagram implementation |
| 62 | 1.9.4.1.1.1.1 | Create Unit Tests | 3d | 2006-07-03 | 2006-07-05 | 53, 54, 47 | 0d |  | start no earlier than 2006-03-28 |  |  |  |
| 63 | 1.9.4.1.1.1.2 | Convert Prototype | 3d | 2006-07-03 | 2006-07-05 | 53, 54 | 0d |  | start no earlier than 2006-03-29 |  |  |  |
| 64 | 1.9.4.1.1.1.3 | Configure components | 3d | 2006-07-03 | 2006-07-05 | 53, 54 | 0d |  | start no earlier than 2006-03-29 |  |  |  |
| 65 | 1.9.4.1.1.1.4 | Test | 3d | 2006-07-06 | 2006-07-10 | 62, 63, 64 | 0d |  |  |  |  |  |
| 66 | 1.9.4.1.2 | **Test case challenge** | 2d | 2006-07-11 | 2006-07-12 | 65 | 0d |  |  | All Captains | 56h |  |
| 67 | 1.9.4.1.2.1 | Submit Challenges | 1d | 2006-07-11 | 2006-07-11 |  | 0d |  |  |  |  |  |
| 68 | 1.9.4.1.2.2 | Appeals response | 1d | 2006-07-12 | 2006-07-12 | 67 | 0d |  |  | Reviewer3; Reviewer2; Reviewer1; Assembly Manager; Architect | 40h |  |
| 69 | 1.9.4.1.3 | **Review** | 11d | 2006-07-13 | 2006-07-27 |  | 0d |  |  |  | 56h |  |
| 70 | 1.9.4.1.3.1 | Score Testcases | 1d | 2006-07-13 | 2006-07-13 | 66 | 1d |  |  | DE | 8h |  |
| 71 | 1.9.4.1.3.2 | Score Submissions | 2d | 2006-07-13 | 2006-07-14 | 66 | 0d |  |  | DE | 16h |  |
| 72 | 1.9.4.1.3.3 | Review Code | 2d | 2006-07-17 | 2006-07-18 | 70, 71 | 0d |  |  | Review Team | 16h |  |
| 73 | 1.9.4.1.3.4 | Appeals | 1d | 2006-07-19 | 2006-07-19 | 72 | 0d |  |  | Review Team | 8h |  |
| 74 | 1.9.4.1.3.5 | Appeals Response | 1d | 2006-07-20 | 2006-07-20 | 73 | 0d |  |  | Review Team | 8h |  |
| 75 | 1.9.4.1.3.6 | Final Fixes | 3d | 2006-07-21 | 2006-07-25 | 74 | 0d |  |  |  |  |  |
| 76 | 1.9.4.1.3.7 | Final Review | 1d | 2006-07-26 | 2006-07-26 | 75 | 0d |  |  |  |  |  |
| 77 | 1.9.4.1.3.8 | PM Review/Certification | 1d | 2006-07-27 | 2006-07-27 | 76 | 0d |  |  |  |  |  |

| ID | WBS | Task | Type | Duration | Start | Finish | Predecessors | Total slack | Free slack | Constraint | Resources | Work |
| --- | --- | --- | --- | --- | --- | --- | --- | --- | --- | --- | --- | --- |
| 78 | 1.10 | **Deployment** |  | 13d | 2006-07-28 | 2006-08-15 |  | 16d | 0d |  |  | 152h |
| 79 | 1.10.1 | Deployment |  | 4d | 2006-07-28 | 2006-08-02 | 48 | 16d | 0d | finish no earlier than 2005-05-27 | Project Manager; Application Assembler 1 | 64h |
| 80 | 1.10.2 | **Testing Iteration** |  | 9d | 2006-08-03 | 2006-08-15 |  | 16d |  |  |  | 88h |
| 81 | 1.10.2.1 | Test Plan Execution |  | 3d | 2006-08-03 | 2006-08-07 | 79 | 16d | 0d | finish no earlier than 2005-06-03 | Project Manager; Application Assembler 1 | 48h |
| 82 | 1.10.2.2 | User Acceptance Testing | milestone | 5d | 2006-08-08 | 2006-08-14 | 81 | 16d | 0d | finish no earlier than 2005-06-03 | Customer | 40h |
| 83 | 1.10.2.3 | PM Certification |  | 1d | 2006-08-15 | 2006-08-15 | 82 | 16d |  |  |  |  |
| 84 | 1.11 | **Support** |  | 30d | 2006-07-28 | 2006-09-07 |  | 0d |  |  |  | 240h |
| 85 | 1.11.1 | Capture DRs |  | 15d | 2006-07-28 | 2006-08-17 | 48 | 0d |  |  | Project Manager | 120h |
| 86 | 1.11.2 | Release Fix |  | 15d | 2006-08-18 | 2006-09-07 | 85 | 0d |  |  | Project Manager | 120h |
| 87 | 1.12 | Send out how-to info to users |  | 1d | 2006-07-28 | 2006-07-28 | 77 | 29d |  |  |  |  |
| 88 | 1.13 | Beta Release to internal users |  | 1d | 2006-08-16 | 2006-08-16 | 78 | 16d |  |  |  |  |
